# 32537_11471_1118202291149AM465241-v2013

Schedule from MS Project, 2022-09-23 to 2023-07-27, status date 2023-07-27, costs in $, A marks actual dates.
Sabian Technologies

## Calendars

- Holiday Break :): Mon-Fri 08:00-12:00, 13:00-17:00; Sat-Sun off. Exceptions (off unless hours are given): 2022-11-24 to 2022-11-27 (Thanksgiving), 2022-12-23 to 2022-12-26 (Christmas), 2023-04-07 to 2023-04-10 (Easter), 2023-05-29 (Memorial Day).

## Resources

| Resource | Rate | Cost per use |
| --- | --- | --- |
| Georgeann Deblanc | 80 |  |
| Julio Gidden | 90 |  |
| Lorette Langendorf | 82 |  |
| Carry Paz | 160 |  |
| Bryan Peeks | 86 |  |
| Period 1 Training Costs |  |  |
| Period 1 Managerial Action Costs |  |  |
| Period 1 Unallocated Resource Costs |  | 86 |
| Aki Washi | 70 |  |
| Period 2 Training Costs |  |  |
| Period 2 Managerial Action Costs |  |  |
| Period 2 Unallocated Resource Costs |  | 3520 |
| Shinchi Kaneko | 147 |  |
| Brian Eckstein | 60 |  |
| Brissa Blanco | 58 |  |
| Period 3 Training Costs |  |  |
| Period 3 Managerial Action Costs |  |  |
| Period 3 Unallocated Resource Costs |  | 20268 |
| Period 4 Training Costs |  |  |
| Period 4 Managerial Action Costs |  |  |
| Period 4 Unallocated Resource Costs |  | 5280 |
| Period 5 Training Costs |  |  |
| Period 5 Managerial Action Costs |  |  |
| Period 5 Unallocated Resource Costs |  |  |
| Kaori Takahashi | 79 |  |
| Xue Choo | 79 |  |
| Abraam Jimenez | 112 |  |
| Period 6 Training Costs |  |  |
| Period 6 Managerial Action Costs |  |  |
| Period 6 Unallocated Resource Costs |  | 237 |
| Eugene Kempton | 45 |  |
| Jimena Domínguez | 82 |  |
| Period 7 Training Costs |  |  |
| Period 7 Managerial Action Costs |  |  |
| Period 7 Unallocated Resource Costs |  | 7534 |
| Lonnie Cepeda | 69 |  |
| Period 8 Training Costs |  |  |
| Period 8 Managerial Action Costs |  |  |
| Period 8 Unallocated Resource Costs |  | 1580 |
| Audo Astor | 73 |  |
| Period 9 Training Costs |  | 5480 |
| Period 9 Managerial Action Costs |  | 60 |
| Period 9 Unallocated Resource Costs |  | 1104 |
| Period 10 Training Costs |  |  |
| Period 10 Managerial Action Costs |  |  |
| Period 10 Unallocated Resource Costs |  |  |
| Period 11 Training Costs |  |  |
| Period 11 Managerial Action Costs |  |  |
| Period 11 Unallocated Resource Costs |  |  |
| Pearl Durie | 55 |  |
| Period 12 Training Costs |  |  |
| Period 12 Managerial Action Costs |  |  |
| Period 12 Unallocated Resource Costs |  | 495 |

## Schedule

| ID | WBS | Task | Duration | Start | Finish | Predecessors | Complete | Baseline start | Baseline finish | Baseline duration | Resources | Work | Actual work | Cost | Baseline cost | Actual cost |
| --- | --- | --- | --- | --- | --- | --- | --- | --- | --- | --- | --- | --- | --- | --- | --- | --- |
| 1 | 1 | **Site Preparation** | 43.88d | 2022-09-23 A | 2022-11-23 A |  | 100% | 2022-09-23 | 2022-10-21 | 20d? |  | 210h | 210h | 16,105 | 14,000 | 16,105 |
| 2 | 1.1 | Surveying | 9.12d | 2022-09-23 A | 2022-10-06 A |  | 100% | 2022-09-23 | 2022-10-05 | 8d? | Georgeann Deblanc | 73h | 73h | 5,840 | 4,800 | 5,840 |
| 3 | 1.2 | Grading and clearing | 5.88d | 2022-10-31 A | 2022-11-08 A | 110, 8, 2 | 100% | 2022-10-07 | 2022-10-14 | 5d? | Lorette Langendorf [75%]; Aki Washi [25%] | 47h | 47h | 3,713 | 3,400 | 3,713 |
| 4 | 1.3 | Roadway development | 5.12d | 2022-11-08 A | 2022-11-15 A | 2, 8, 110 | 100% | 2022-10-07 | 2022-10-13 | 4d? | Lorette Langendorf [30%]; Aki Washi [70%] | 41h | 41h | 3,017.6 | 2,400 | 3,017.6 |
| 5 | 1.4 | Apply first coat of asphalt | 3.62d | 2022-11-15 A | 2022-11-21 A | 3, 4 | 100% | 2022-10-14 | 2022-10-19 | 3d? | Aki Washi [70%]; Lorette Langendorf [30%] | 29h | 29h | 2,134.4 | 2,040 | 2,134.4 |
| 6 | 1.5 | Apply second cost of asphalt | 2.5d | 2022-11-21 A | 2022-11-23 A | 5 | 100% | 2022-10-19 | 2022-10-21 | 2d? | Aki Washi | 20h | 20h | 1,400 | 1,360 | 1,400 |
| 7 | 2 | **General Conditions** | 35.62d | 2022-09-23 A | 2022-11-11 A |  | 100% | 2022-09-23 | 2022-10-10 | 11d? |  | 276h | 276h | 23,612 | 14,440 | 23,612 |
| 8 | 2.1 | Finalize plans and develop estimates | 26.75d | 2022-09-23 A | 2022-10-31 A |  | 100% | 2022-09-23 | 2022-10-07 | 10d? | Lorette Langendorf | 214h | 214h | 17,548 | 10,000 | 17,548 |
| 9 | 2.2 | Sign contract and notice to proceed | 1d | 2022-11-10 A | 2022-11-11 A | 8, 110 | 100% | 2022-10-07 | 2022-10-10 | 1d? | Carry Paz | 8h | 8h | 1,280 | 1,000 | 1,280 |
| 10 | 2.3 | Apply for all permits | 3.25d | 2022-09-23 A | 2022-09-28 A |  | 100% | 2022-09-23 | 2022-09-27 | 2d? | Julio Gidden | 26h | 26h | 2,340 | 2,000 | 2,340 |
| 11 | 2.4 | Install temporary power service | 1.12d | 2022-09-28 A | 2022-09-29 A | 10 | 100% | 2022-09-27 | 2022-09-28 | 1d? | Julio Gidden | 9h | 9h | 810 | 720 | 810 |
| 12 | 2.5 | Install underground utilities | 2.38d | 2022-09-29 A | 2022-10-03 A | 11 | 100% | 2022-09-28 | 2022-09-29 | 1d? | Bryan Peeks | 19h | 19h | 1,634 | 720 | 1,634 |
| 13 | 3 | **Foundation** | 35.62d | 2022-11-24 A | 2023-01-18 A |  | 100% | 2022-10-21 | 2022-12-07 | 33d? |  | 317h | 317h | 23,690 | 22,760 | 23,690 |
| 14 | 3.1 | Excavate for foundation | 3.62d | 2022-11-24 A | 2022-11-29 A | 12, 9, 111, 6 | 100% | 2022-10-21 | 2022-10-26 | 3d? | Aki Washi | 29h | 29h | 2,030 | 2,040 | 2,030 |
| 15 | 3.2 | Form basement walls | 15.62d | 2022-11-29 A | 2022-12-21 A | 14 | 100% | 2022-10-26 | 2022-11-14 | 13d? | Aki Washi [60%]; Lorette Langendorf [40%] | 125h | 125h | 9,350 | 8,840 | 9,350 |
| 16 | 3.3 | Pour concrete for foundation | 14.38d | 2022-12-21 A | 2023-01-10 A | 15 | 100% | 2022-11-14 | 2022-11-30 | 12d? | Aki Washi [60%]; Lorette Langendorf [40%] | 115h | 115h | 8,602 | 8,160 | 8,602 |
| 17 | 3.4 | Waterproof/insulate basement walls | 2.38d | 2023-01-10 A | 2023-01-12 A | 16 | 100% | 2022-11-30 | 2022-12-02 | 2d? | Lorette Langendorf | 19h | 19h | 1,558 | 1,360 | 1,558 |
| 18 | 3.5 | Perform foundation inspection | 1.25d | 2023-01-13 A | 2023-01-16 A | 17, 14 | 100% | 2022-12-02 | 2022-12-05 | 1d? | Lorette Langendorf | 10h | 10h | 820 | 1,000 | 820 |
| 19 | 3.6 | Backfill foundation | 2.38d | 2023-01-16 A | 2023-01-18 A | 18 | 100% | 2022-12-05 | 2022-12-07 | 2d? | Aki Washi | 19h | 19h | 1,330 | 1,360 | 1,330 |
| 20 | 4 | **Framing** | 18d | 2023-01-18 A | 2023-02-13 A |  | 100% | 2022-12-07 | 2022-12-28 | 15d? |  | 144h | 144h | 8,448 | 6,600 | 8,448 |
| 21 | 4.1 | Lay 1st floor decking | 2.38d | 2023-01-18 A | 2023-01-20 A | 19, 112 | 100% | 2022-12-07 | 2022-12-09 | 2d? | Brian Eckstein | 19h | 19h | 1,140 | 800 | 1,140 |
| 22 | 4.2 | Frame 1st floor walls | 4.75d | 2023-01-23 A | 2023-01-27 A | 21 | 100% | 2022-12-09 | 2022-12-15 | 4d? | Brissa Blanco | 38h | 38h | 2,204 | 1,600 | 2,204 |
| 23 | 4.3 | Frame 2nd floor decking | 2.38d | 2023-01-27 A | 2023-02-01 A | 22 | 100% | 2022-12-15 | 2022-12-19 | 2d? | Brian Eckstein | 19h | 19h | 1,140 | 800 | 1,140 |
| 24 | 4.4 | Frame 2nd floor walls | 3.62d | 2023-02-01 A | 2023-02-06 A | 23 | 100% | 2022-12-19 | 2022-12-22 | 3d? | Brissa Blanco | 29h | 29h | 1,682 | 1,200 | 1,682 |
| 25 | 4.5 | Complete roof framing | 3.62d | 2023-02-06 A | 2023-02-10 A | 24 | 100% | 2022-12-22 | 2022-12-27 | 3d? | Brissa Blanco | 29h | 29h | 1,682 | 1,200 | 1,682 |
| 26 | 4.6 | Conduct framing inspection | 1.25d | 2023-02-10 A | 2023-02-13 A | 25 | 100% | 2022-12-27 | 2022-12-28 | 1d? | Brian Eckstein | 10h | 10h | 600 | 1,000 | 600 |

| ID | WBS | Task | Duration | Start | Finish | Predecessors | Complete | Baseline start | Baseline finish | Baseline duration | Resources | Work | Actual work | Cost | Baseline cost | Actual cost |
| --- | --- | --- | --- | --- | --- | --- | --- | --- | --- | --- | --- | --- | --- | --- | --- | --- |
| 27 | 5 | **Dry In** | 24.75d | 2023-02-13 A | 2023-03-20 A |  | 100% | 2022-12-28 | 2023-01-26 | 21d? |  | 180h | 180h | 10,630.4 | 7,600 | 10,630.4 |
| 28 | 5.1 | Install 1st floor sheathing | 3.62d | 2023-02-13 A | 2023-02-17 A | 26, 113 | 100% | 2022-12-28 | 2023-01-02 | 3d? | Brissa Blanco | 29h | 29h | 1,682 | 1,200 | 1,682 |
| 29 | 5.2 | Install 2nd floor sheathing | 3.62d | 2023-02-17 A | 2023-02-22 A | 28 | 100% | 2023-01-02 | 2023-01-05 | 3d? | Brissa Blanco | 29h | 29h | 1,682 | 1,200 | 1,682 |
| 30 | 5.3 | Install roof decking | 3.5d | 2023-02-13 A | 2023-02-17 A | 25, 113 | 100% | 2022-12-28 | 2023-01-02 | 3d? | Brian Eckstein | 28h | 28h | 1,680 | 1,200 | 1,680 |
| 31 | 5.4 | Install felt, flashing and shingles | 3.5d | 2023-03-02 A | 2023-03-08 A | 114, 101, 104, 30 | 100% | 2023-01-12 | 2023-01-17 | 3d? | Brian Eckstein | 28h | 28h | 1,680 | 1,200 | 1,680 |
| 32 | 5.5 | Hang 1st floor exterior doors | 1.25d | 2023-03-08 A | 2023-03-09 A | 31 | 100% | 2023-01-17 | 2023-01-18 | 1d? | Brissa Blanco | 10h | 10h | 580 | 400 | 580 |
| 33 | 5.6 | Install 1st floor windows | 3.5d | 2023-03-09 A | 2023-03-14 A | 32 | 100% | 2023-01-18 | 2023-01-23 | 3d? | Brian Eckstein [40%]; Brissa Blanco [60%] | 28h | 28h | 1,646.4 | 1,200 | 1,646.4 |
| 34 | 5.7 | Install 2nd floor windows | 3.5d | 2023-03-14 A | 2023-03-20 A | 33 | 100% | 2023-01-23 | 2023-01-26 | 3d? | Brian Eckstein | 28h | 28h | 1,680 | 1,200 | 1,680 |
| 35 | 6 | **Exterior Finishes** | 37.25d | 2023-04-03 A | 2023-05-26 A |  | 100% | 2023-01-30 | 2023-03-10 | 29d? |  | 195h | 195h | 14,732 | 11,400 | 14,732 |
| 36 | 6.1 | Complete exterior brickwork | 20.12d | 2023-04-03 A | 2023-05-01 A | 34, 103, 115 | 100% | 2023-01-30 | 2023-02-21 | 16d? | Jimena Domínguez | 161h | 161h | 13,202 | 9,600 | 13,202 |
| 37 | 6.2 | Complete exterior siding | 4.25d | 2023-05-22 A | 2023-05-26 A | 117, 52, 36 | 100% | 2023-03-07 | 2023-03-10 | 3d? | Eugene Kempton | 34h | 34h | 1,530 | 1,800 | 1,530 |
| 38 | 7 | **Utility Rough-Ins and Complete Concrete** | 19.62d | 2023-04-07 A | 2023-05-08 A |  | 100% | 2023-01-30 | 2023-02-23 | 18d? |  | 62h | 62h | 4,578 | 2,200 | 4,578 |
| 39 | 7.1 | Place wall insulation - 1st floor | 1.38d | 2023-04-07 A | 2023-04-10 A | 34, 29, 28, 106, 104, 103, 108, 115 | 100% | 2023-01-30 | 2023-01-31 | 1d? | Brissa Blanco | 11h | 11h | 638 | 400 | 638 |
| 40 | 7.2 | Place wall insulation - 2nd floor | 1.38d | 2023-04-10 A | 2023-04-11 A | 39 | 100% | 2023-01-31 | 2023-02-01 | 1d? | Brian Eckstein | 11h | 11h | 660 | 400 | 660 |
| 41 | 7.3 | Place ceiling insulation - 2nd floor | 2.5d | 2023-05-01 A | 2023-05-04 A | 40, 116 | 100% | 2023-02-21 | 2023-02-22 | 1d? | Jimena Domínguez | 20h | 20h | 1,640 | 400 | 1,640 |
| 42 | 7.4 | Conduct insulation inspection | 2.5d | 2023-05-04 A | 2023-05-08 A | 41, 36 | 100% | 2023-02-22 | 2023-02-23 | 1d? | Jimena Domínguez | 20h | 20h | 1,640 | 1,000 | 1,640 |
| 43 | 8 | **Drywall and Paint** | 29.5d | 2023-04-10 A | 2023-05-22 A |  | 100% | 2023-01-31 | 2023-03-07 | 25d? |  | 155h | 155h | 8,391 | 7,840 | 8,391 |
| 44 | 8.1 | Install drywall - 1st floor walls | 2.38d | 2023-04-10 A | 2023-04-12 A | 39 | 100% | 2023-01-31 | 2023-02-02 | 2d? | Eugene Kempton | 19h | 19h | 855 | 800 | 855 |
| 45 | 8.2 | Install drywall - 1st floor overhead | 2.38d | 2023-04-12 A | 2023-04-17 A | 44 | 100% | 2023-02-02 | 2023-02-06 | 2d? | Eugene Kempton | 19h | 19h | 855 | 800 | 855 |
| 46 | 8.3 | Install drywall - 2nd floor walls | 2.38d | 2023-04-17 A | 2023-04-19 A | 45, 40 | 100% | 2023-02-06 | 2023-02-08 | 2d? | Eugene Kempton | 19h | 19h | 855 | 800 | 855 |
| 47 | 8.4 | Install drywall - 2nd floor overhead | 2.38d | 2023-04-19 A | 2023-04-21 A | 46 | 100% | 2023-02-08 | 2023-02-10 | 2d? | Eugene Kempton | 19h | 19h | 855 | 800 | 855 |
| 48 | 8.5 | Tape and sand 1st floor drywall | 1.25d | 2023-05-08 A | 2023-05-09 A | 45, 42 | 100% | 2023-02-23 | 2023-02-24 | 1d? | Eugene Kempton | 10h | 10h | 450 | 400 | 450 |
| 49 | 8.6 | Tape and sand 2nd floor drywall | 1.25d | 2023-05-09 A | 2023-05-11 A | 47, 48 | 100% | 2023-02-24 | 2023-02-27 | 1d? | Eugene Kempton | 10h | 10h | 450 | 400 | 450 |
| 50 | 8.7 | Paint all - 1st floor | 1.25d | 2023-05-11 A | 2023-05-12 A | 49 | 100% | 2023-02-27 | 2023-02-28 | 1d? | Lonnie Cepeda | 10h | 10h | 690 | 640 | 690 |
| 51 | 8.8 | Paint all - 2nd floor | 1.25d | 2023-05-12 A | 2023-05-15 A | 50 | 100% | 2023-02-28 | 2023-03-01 | 1d? | Lonnie Cepeda | 10h | 10h | 690 | 640 | 690 |
| 52 | 8.9 | Paint exterior trim and siding | 4.88d | 2023-05-15 A | 2023-05-22 A | 51 | 100% | 2023-03-01 | 2023-03-07 | 4d? | Lonnie Cepeda | 39h | 39h | 2,691 | 2,560 | 2,691 |

| ID | WBS | Task | Duration | Start | Finish | Predecessors | Complete | Baseline start | Baseline finish | Baseline duration | Resources | Work | Actual work | Cost | Baseline cost | Actual cost |
| --- | --- | --- | --- | --- | --- | --- | --- | --- | --- | --- | --- | --- | --- | --- | --- | --- |
| 53 | 9 | **Cabinets** | 5.75d | 2023-05-22 A | 2023-05-31 A |  | 100% | 2023-03-07 | 2023-03-15 | 6d? |  | 54h | 54h | 3,942 | 3,600 | 3,942 |
| 54 | 9.1 | Install 1st floor - kitchen cabinets | 2.25d | 2023-05-22 A | 2023-05-24 A | 52, 50, 117 | 100% | 2023-03-07 | 2023-03-09 | 2d? | Audo Astor | 18h | 18h | 1,314 | 1,200 | 1,314 |
| 55 | 9.2 | Install 1st floor - master bath cabinets | 1.12d | 2023-05-24 A | 2023-05-25 A | 54 | 100% | 2023-03-09 | 2023-03-10 | 1d? | Audo Astor | 9h | 9h | 657 | 600 | 657 |
| 56 | 9.3 | Install 2nd floor - hall bath cabinets | 1.12d | 2023-05-25 A | 2023-05-26 A | 55 | 100% | 2023-03-10 | 2023-03-13 | 1d? | Audo Astor | 9h | 9h | 657 | 600 | 657 |
| 57 | 9.4 | Install chair rails and crown molding | 2.25d | 2023-05-29 A | 2023-05-31 A | 56 | 100% | 2023-03-13 | 2023-03-15 | 2d? | Audo Astor | 18h | 18h | 1,314 | 1,200 | 1,314 |
| 58 | 10 | **Finish Plumbing** | 5.75d | 2023-05-24 A | 2023-06-02 A |  | 100% | 2023-03-09 | 2023-03-17 | 6d? |  | 54h | 54h | 4,266 | 3,840 | 4,266 |
| 59 | 10.1 | Complete 1st floor - kitchen plumbing | 1.12d | 2023-05-24 A | 2023-05-25 A | 54, 102 | 100% | 2023-03-09 | 2023-03-10 | 1d? | Kaori Takahashi | 9h | 9h | 711 | 640 | 711 |
| 60 | 10.2 | Complete 1st floor - master bath plumbing | 2.25d | 2023-05-25 A | 2023-05-30 A | 55, 59 | 100% | 2023-03-10 | 2023-03-14 | 2d? | Kaori Takahashi | 18h | 18h | 1,422 | 1,280 | 1,422 |
| 61 | 10.3 | Complete 2nd floor - hall bath plumbing | 2.25d | 2023-05-30 A | 2023-06-01 A | 60, 56 | 100% | 2023-03-14 | 2023-03-16 | 2d? | Kaori Takahashi | 18h | 18h | 1,422 | 1,280 | 1,422 |
| 62 | 10.4 | Conduct finish plumbing inspection | 1.12d | 2023-06-01 A | 2023-06-02 A | 61 | 100% | 2023-03-16 | 2023-03-17 | 1d? | Kaori Takahashi | 9h | 9h | 711 | 640 | 711 |
| 63 | 11 | **Finish Electrical** | 6.38d | 2023-06-02 A | 2023-06-12 A |  | 100% | 2023-03-17 | 2023-03-22 | 3d? |  | 85h | 85h | 5,343 | 3,880 | 5,343 |
| 64 | 11.1 | Complete 1st floor circuits to standard | 1.88d | 2023-06-02 A | 2023-06-06 A | 62, 105, 118 | 100% | 2023-03-17 | 2023-03-20 | 1d? | Audo Astor | 15h | 15h | 1,095 | 720 | 1,095 |
| 65 | 11.2 | Complete 2nd floor circuits to standard | 2.25d | 2023-06-06 A | 2023-06-08 A | 64 | 100% | 2023-03-20 | 2023-03-21 | 1d? | Jimena Domínguez | 18h | 18h | 1,476 | 720 | 1,476 |
| 66 | 11.3 | Conduct finish electrical inspection | 2.25d | 2023-06-08 A | 2023-06-12 A | 65 | 100% | 2023-03-21 | 2023-03-22 | 1d? | Lonnie Cepeda | 18h | 18h | 1,242 | 1,000 | 1,242 |
| 67 | 11.4 | Complete communications wiring | 4.25d | 2023-06-02 A | 2023-06-08 A | 62, 118 | 100% | 2023-03-17 | 2023-03-21 | 2d? | Eugene Kempton | 34h | 34h | 1,530 | 1,440 | 1,530 |
| 68 | 12 | **Finish HVAC** | 4.75d | 2023-06-08 A | 2023-06-15 A |  | 100% | 2023-03-21 | 2023-03-24 | 3d? |  | 38h | 38h | 2,050 | 2,280 | 2,050 |
| 69 | 12.1 | Complete 1st floor - zone 1 HVAC | 1.75d | 2023-06-08 A | 2023-06-12 A | 107, 67 | 100% | 2023-03-21 | 2023-03-22 | 1d? | Eugene Kempton | 14h | 14h | 630 | 640 | 630 |
| 70 | 12.2 | Complete 2nd floor - zone 2 HVAC | 1.75d | 2023-06-12 A | 2023-06-14 A | 69 | 100% | 2023-03-22 | 2023-03-23 | 1d? | Eugene Kempton | 14h | 14h | 630 | 640 | 630 |
| 71 | 12.3 | Conduct HVAC inspection | 1.25d | 2023-06-14 A | 2023-06-15 A | 70 | 100% | 2023-03-23 | 2023-03-24 | 1d? | Kaori Takahashi | 10h | 10h | 790 | 1,000 | 790 |
| 72 | 13 | **Carpet, Tile and Appliances** | 9.38d | 2023-06-15 A | 2023-06-28 A |  | 100% | 2023-03-24 | 2023-04-05 | 8d? |  | 75h | 75h | 5,475 | 4,000 | 5,475 |
| 73 | 13.1 | Tile entry, kitchen and baths | 3.5d | 2023-06-15 A | 2023-06-20 A | 66, 119, 71 | 100% | 2023-03-24 | 2023-03-29 | 3d? | Audo Astor | 28h | 28h | 2,044 | 1,800 | 2,044 |
| 74 | 13.2 | Carpet 1st floor | 2.25d | 2023-06-21 A | 2023-06-23 A | 73 | 100% | 2023-03-29 | 2023-03-31 | 2d? | Audo Astor | 18h | 18h | 1,314 | 800 | 1,314 |
| 75 | 13.3 | Carpet 2nd floor | 2.25d | 2023-06-23 A | 2023-06-27 A | 74 | 100% | 2023-03-31 | 2023-04-04 | 2d? | Audo Astor | 18h | 18h | 1,314 | 800 | 1,314 |
| 76 | 13.4 | Install appliances | 1.38d | 2023-06-27 A | 2023-06-28 A | 75 | 100% | 2023-04-04 | 2023-04-05 | 1d? | Audo Astor | 11h | 11h | 803 | 600 | 803 |

| ID | WBS | Task | Duration | Start | Finish | Predecessors | Complete | Baseline start | Baseline finish | Baseline duration | Resources | Work | Actual work | Cost | Baseline cost | Actual cost |
| --- | --- | --- | --- | --- | --- | --- | --- | --- | --- | --- | --- | --- | --- | --- | --- | --- |
| 77 | 14 | **Landscaping and Grounds Work** | 35.38d | 2023-05-22 A | 2023-07-11 A |  | 100% | 2023-03-07 | 2023-04-12 | 26d? |  | 91h | 91h | 7,219 | 3,360 | 7,219 |
| 78 | 14.1 | Pour concrete driveway and sidewalk | 2.38d | 2023-05-22 A | 2023-05-24 A | 52, 117 | 100% | 2023-03-07 | 2023-03-09 | 2d? | Jimena Domínguez | 19h | 19h | 1,558 | 1,360 | 1,558 |
| 79 | 14.2 | Install backyard fence | 3d | 2023-06-28 A | 2023-07-03 A | 76, 78 | 100% | 2023-04-05 | 2023-04-07 | 2d? | Jimena Domínguez | 24h | 24h | 1,968 | 800 | 1,968 |
| 80 | 14.3 | Sod and complete plantings - front yard | 4.88d | 2023-07-03 A | 2023-07-10 A | 79 | 100% | 2023-04-07 | 2023-04-11 | 2d? | Jimena Domínguez | 39h | 39h | 3,198 | 800 | 3,198 |
| 81 | 14.4 | Sod and complete plantings - back yard | 1.12d | 2023-07-10 A | 2023-07-11 A | 80, 120 | 100% | 2023-04-11 | 2023-04-12 | 1d? | Pearl Durie | 9h | 9h | 495 | 400 | 495 |
| 82 | 15 | **Final Acceptance** | 11.5d | 2023-07-11 A | 2023-07-27 A |  | 100% | 2023-04-12 | 2023-04-24 | 8d? |  | 92h | 92h | 6,716 | 7,400 | 6,716 |
| 83 | 15.1 | Complete final inspection for certification | 1.75d | 2023-07-11 A | 2023-07-13 A | 37, 71, 103, 42, 66, 62, 57, 81 | 100% | 2023-04-12 | 2023-04-13 | 1d? | Audo Astor | 14h | 14h | 1,022 | 1,000 | 1,022 |
| 84 | 15.2 | Cleanup for occupancy | 1.12d | 2023-07-13 A | 2023-07-14 A | 83, 76 | 100% | 2023-04-13 | 2023-04-14 | 1d? | Audo Astor | 9h | 9h | 657 | 400 | 657 |
| 85 | 15.3 | Perform final walk-through inspection | 1.38d | 2023-07-14 A | 2023-07-18 A | 84 | 100% | 2023-04-14 | 2023-04-17 | 1d? | Audo Astor | 11h | 11h | 803 | 1,000 | 803 |
| 86 | 15.4 | Complete punch list items | 7.25d | 2023-07-18 A | 2023-07-27 A | 85 | 100% | 2023-04-17 | 2023-04-24 | 5d? | Audo Astor | 58h | 58h | 4,234 | 5,000 | 4,234 |
| 87 | 16 | **Project Management** | 207.38d | 2022-09-23 A | 2023-07-20 A |  | 100% | 2022-09-23 | 2023-04-20 | 149d? |  | 951h | 951h | 126,017.8 | 110,000 | 126,017.8 |
| 88 | 16.1 | Project Management Period 1 | 7.88d | 2022-09-23 A | 2022-10-04 A |  | 100% | 2022-09-23 | 2022-10-04 | 7.5d? | Carry Paz | 63h | 63h | 10,080 | 7,500 | 10,080 |
| 89 | 16.2 | Project Management Period 2 | 7.88d | 2022-10-31 A | 2022-11-10 A | 88, 110 | 100% | 2022-10-07 | 2022-10-18 | 7.5d? | Carry Paz | 63h | 63h | 10,080 | 7,500 | 10,080 |
| 90 | 16.3 | Project Management Period 3 | 25.25d | 2022-11-24 A | 2022-12-29 A | 111, 89 | 100% | 2022-10-21 | 2022-11-24 | 24d? | Shinchi Kaneko [70%]; Carry Paz [30%] | 202h | 202h | 30,481.8 | 24,000 | 30,481.8 |
| 91 | 16.4 | Project Management Period 4 | 11.62d | 2023-01-18 A | 2023-02-03 A | 90, 112 | 100% | 2022-12-07 | 2022-12-22 | 11d? | Shinchi Kaneko | 93h | 93h | 13,671 | 11,000 | 13,671 |
| 92 | 16.5 | Project Management Period 5 | 8.38d | 2023-02-13 A | 2023-02-23 A | 113, 91 | 100% | 2022-12-28 | 2023-01-09 | 8d? | Shinchi Kaneko | 67h | 67h | 9,849 | 8,000 | 9,849 |
| 93 | 16.6 | Project Management Period 6 | 7.88d | 2023-03-02 A | 2023-03-14 A | 92, 114 | 100% | 2023-01-12 | 2023-01-23 | 7d? | Abraam Jimenez | 63h | 63h | 7,056 | 7,000 | 7,056 |
| 94 | 16.7 | Project Management Period 7 | 13.5d | 2023-04-03 A | 2023-04-20 A | 115, 93 | 100% | 2023-01-30 | 2023-02-15 | 12d? | Abraam Jimenez | 108h | 108h | 12,096 | 12,000 | 12,096 |
| 95 | 16.8 | Project Management Period 8 | 6.75d | 2023-04-21 A | 2023-05-01 A | 94 | 100% | 2023-02-15 | 2023-02-23 | 6d? | Abraam Jimenez | 54h | 54h | 6,048 | 6,000 | 6,048 |
| 96 | 16.9 | Project Management Period 9 | 6.62d | 2023-05-22 A | 2023-05-31 A | 95, 117 | 100% | 2023-03-07 | 2023-03-15 | 6d? | Abraam Jimenez | 53h | 53h | 5,936 | 6,000 | 5,936 |
| 97 | 16.10 | Project Management Period 10 | 5.5d | 2023-06-02 A | 2023-06-09 A | 118, 96 | 100% | 2023-03-17 | 2023-03-24 | 5d? | Abraam Jimenez | 44h | 44h | 4,928 | 5,000 | 4,928 |
| 98 | 16.11 | Project Management Period 11 | 9.88d | 2023-06-15 A | 2023-06-29 A | 97, 119 | 100% | 2023-03-24 | 2023-04-06 | 9d? | Abraam Jimenez | 79h | 79h | 8,848 | 9,000 | 8,848 |
| 99 | 16.12 | Project Management Period 12 | 7.75d | 2023-07-10 A | 2023-07-20 A | 120, 98 | 100% | 2023-04-11 | 2023-04-20 | 7d? | Abraam Jimenez | 62h | 62h | 6,944 | 7,000 | 6,944 |
| 100 | 17 | **Insulation** | 34.88d | 2023-02-17 A | 2023-04-06 A |  | 100% | 2023-01-02 | 2023-01-30 | 20d? |  | 332h | 332h | 27,232 | 20,640 | 27,232 |
| 101 | 17.1 | Rough-in plumbing | 5.75d | 2023-02-22 A | 2023-03-02 A | 30, 29 | 100% | 2023-01-05 | 2023-01-12 | 5d? | Bryan Peeks | 46h | 46h | 3,956 | 3,200 | 3,956 |
| 102 | 17.2 | Conduct rough-in plumbing inspection | 1.25d | 2023-03-02 A | 2023-03-03 A | 114, 101 | 100% | 2023-01-12 | 2023-01-13 | 1d? | Kaori Takahashi | 10h | 10h | 790 | 1,000 | 790 |
| 103 | 17.3 | Pour concrete for basement floor | 20.62d | 2023-03-03 A | 2023-04-03 A | 102 | 100% | 2023-01-13 | 2023-01-30 | 11d? | Kaori Takahashi | 165h | 165h | 13,035 | 7,480 | 13,035 |
| 104 | 17.4 | Rough-in electrical | 5.5d | 2023-02-22 A | 2023-03-02 A | 29, 30 | 100% | 2023-01-05 | 2023-01-12 | 5d? | Julio Gidden | 44h | 44h | 3,960 | 3,600 | 3,960 |
| 105 | 17.5 | Conduct rough-in electrical inspection | 1.12d | 2023-03-02 A | 2023-03-03 A | 104, 114 | 100% | 2023-01-12 | 2023-01-13 | 1d? | Xue Choo | 9h | 9h | 711 | 1,000 | 711 |
| 106 | 17.6 | Rough-in HVAC | 3.5d | 2023-04-03 A | 2023-04-06 A | 105 | 100% | 2023-01-13 | 2023-01-18 | 3d? | Kaori Takahashi | 28h | 28h | 2,212 | 1,920 | 2,212 |
| 107 | 17.7 | Conduct rough-in HVAC inspection | 1.5d | 2023-03-09 A | 2023-03-10 A | 106 | 100% | 2023-01-18 | 2023-01-19 | 1d? | Xue Choo | 12h | 12h | 948 | 1,000 | 948 |
| 108 | 17.8 | Rough-in communication - phone, cable | 2.25d | 2023-02-17 A | 2023-02-21 A | 30 | 100% | 2023-01-02 | 2023-01-04 | 2d? | Julio Gidden | 18h | 18h | 1,620 | 1,440 | 1,620 |

| ID | WBS | Task | Type | Duration | Start | Finish | Predecessors | Complete | Baseline start | Baseline finish | Baseline duration | Resources | Cost | Baseline cost | Actual cost |
| --- | --- | --- | --- | --- | --- | --- | --- | --- | --- | --- | --- | --- | --- | --- | --- |
| 109 | 18 | **Milestones** |  | 185.5d | 2022-10-31 A | 2023-07-27 A |  | 100% | 2022-10-07 | 2023-04-24 | 141d? |  | 45,644 | 25,000 | 45,644 |
| 110 | 18.1 | Milestone 1 | milestone | 0d | 2022-10-31 A | 2022-10-31 A | 8, 88, 2, 12 | 100% | 2022-10-07 | 2022-10-07 | 0d? | Period 1 Training Costs; Period 1 Managerial Action Costs; Period 1 Unallocated Resource Costs | 86 | 3,125 | 86 |
| 111 | 18.2 | Milestone 2 | milestone | 0d | 2022-11-23 A | 2022-11-23 A | 9, 6, 89 | 100% | 2022-10-21 | 2022-10-21 | 0d? | Period 2 Training Costs; Period 2 Managerial Action Costs; Period 2 Unallocated Resource Costs | 3,520 | 3,125 | 3,520 |
| 112 | 18.3 | Milestone 3 | milestone | 0d | 2023-01-18 A | 2023-01-18 A | 90, 19 | 100% | 2022-12-07 | 2022-12-07 | 0d? | Period 3 Training Costs; Period 3 Managerial Action Costs; Period 3 Unallocated Resource Costs | 20,268 | 3,125 | 20,268 |
| 113 | 18.4 | Milestone 4 | milestone | 0d | 2023-02-13 A | 2023-02-13 A | 26, 91 | 100% | 2022-12-28 | 2022-12-28 | 0d? | Period 4 Training Costs; Period 4 Managerial Action Costs; Period 4 Unallocated Resource Costs | 5,280 | 3,125 | 5,280 |
| 114 | 18.5 | Milestone 5 | milestone | 0d | 2023-03-02 A | 2023-03-02 A | 92, 108, 101, 104 | 100% | 2023-01-12 | 2023-01-12 | 0d? | Period 5 Training Costs; Period 5 Managerial Action Costs; Period 5 Unallocated Resource Costs |  | 3,125 |  |
| 115 | 18.6 | Milestone 6 | milestone | 0d | 2023-04-03 A | 2023-04-03 A | 107, 103, 93, 34 | 100% | 2023-01-30 | 2023-01-30 | 0d? | Period 6 Training Costs; Period 6 Managerial Action Costs; Period 6 Unallocated Resource Costs | 237 | 3,125 | 237 |
| 116 | 18.7 | Milestone 7 | milestone | 0d | 2023-05-01 A | 2023-05-01 A | 36, 94, 47 | 100% | 2023-02-21 | 2023-02-21 | 0d? | Period 7 Training Costs; Period 7 Managerial Action Costs; Period 7 Unallocated Resource Costs | 7,534 | 3,125 | 7,534 |
| 117 | 18.8 | Milestone 8 | milestone | 0d | 2023-05-22 A | 2023-05-22 A | 95, 52 | 100% | 2023-03-07 | 2023-03-07 | 0d? | Period 8 Training Costs; Period 8 Managerial Action Costs; Period 8 Unallocated Resource Costs | 1,580 | 3,125 | 1,580 |
| 118 | 18.9 | Milestone 9 | milestone | 0d | 2023-06-02 A | 2023-06-02 A | 57, 78, 62, 96, 37 | 100% | 2023-03-17 | 2023-03-17 | 0d? | Period 9 Training Costs; Period 9 Managerial Action Costs; Period 9 Unallocated Resource Costs | 6,644 |  | 6,644 |
| 119 | 18.10 | Milestone 10 | milestone | 0d | 2023-06-15 A | 2023-06-15 A | 71, 97, 66 | 100% | 2023-03-24 | 2023-03-24 | 0d? | Period 10 Training Costs; Period 10 Managerial Action Costs; Period 10 Unallocated Resource Costs |  |  |  |
| 120 | 18.11 | Milestone 11 | milestone | 0d | 2023-07-10 A | 2023-07-10 A | 80, 98 | 100% | 2023-04-11 | 2023-04-11 | 0d? | Period 11 Training Costs; Period 11 Managerial Action Costs; Period 11 Unallocated Resource Costs |  |  |  |
| 121 | 18.12 | Milestone 12 | milestone | 0d | 2023-07-27 A | 2023-07-27 A | 99, 86 | 100% | 2023-04-24 | 2023-04-24 | 0d? | Period 12 Training Costs; Period 12 Managerial Action Costs; Period 12 Unallocated Resource Costs | 495 |  | 495 |
